# Project Schedule 03-03-19

Schedule from MS Project, 2018-10-20 to 2019-06-28.

## Calendars

- Standard: Mon-Fri 08:00-12:00, 13:00-17:00; Sat 08:00-17:00; Sun off.

## Schedule

| ID | WBS | Task | Type | Duration | Start | Finish | Predecessors | Total slack | Free slack |
| --- | --- | --- | --- | --- | --- | --- | --- | --- | --- |
| 1 | 1 | **Hard and Softscape Works for Bennington, Setapak** |  | 220d | 2018-10-20 | 2019-06-28 |  | 0d |  |
| 2 | 1.1 | Milestone Start | milestone | 0d | 2018-10-20 | 2018-10-20 |  | 0d |  |
| 3 | 1.2 | Sample Submission and Approval |  | 30d | 2018-10-20 | 2018-11-23 | 2 | 0d |  |
| 4 | 1.3 | Shop Drawings |  | 30d | 2018-11-23 | 2018-12-27 | 3 | 43d | 0d |
| 5 | 1.4 | Nursery Visit |  | 1w | 2018-12-27 | 2019-01-02 | 4 | 43d | 0d |
| 6 | 1.5 | **Ground Floor** |  | 112d | 2019-01-02 | 2019-05-10 |  | 43d |  |
| 7 | 1.5.1 | Milestone Start - Ground Floor | milestone | 0d | 2019-01-02 | 2019-01-02 | 5 | 43d | 0d |
| 8 | 1.5.2 | **Reflective Pool** |  | 35d | 2019-01-02 | 2019-02-11 |  | 43d |  |
| 9 | 1.5.2.1 | Plastering |  | 10d | 2019-01-02 | 2019-01-14 | 7 | 43d | 0d |
| 10 | 1.5.2.2 | Finishes (GF-03 and GW-07) |  | 15d | 2019-01-14 | 2019-01-31 | 9 | 43d | 0d |
| 11 | 1.5.2.3 | Copings (GC-06 ad GC-05) |  | 10d | 2019-01-31 | 2019-02-11 | 10 | 110d | 25d |
| 12 | 1.5.3 | **Planter Terrace** |  | 65d | 2019-01-14 | 2019-03-29 |  | 55d |  |
| 13 | 1.5.3.1 | Plastering |  | 15d | 2019-01-14 | 2019-01-31 | 9 | 55d | 0d |
| 14 | 1.5.3.2 | Pebble Stone Cladding (GW-07) |  | 20d | 2019-01-31 | 2019-02-22 | 13, 10 | 65d | 0d |
| 15 | 1.5.3.3 | Coping (GC-06) |  | 10d | 2019-02-22 | 2019-03-06 | 14 | 65d | 0d |
| 16 | 1.5.3.4 | Safety Railing |  | 20d | 2019-03-06 | 2019-03-29 | 15 | 65d | 0d |
| 17 | 1.5.4 | **Boardwalk, Lounge Deck and Ramp Staircase** |  | 65d | 2019-01-31 | 2019-04-15 |  | 55d |  |
| 18 | 1.5.4.1 | Plastering |  | 10d | 2019-01-31 | 2019-02-11 | 13 | 55d | 0d |
| 19 | 1.5.4.2 | Wash Aggregates (GF-09) |  | 10d | 2019-02-11 | 2019-02-22 | 18 | 55d | 0d |
| 20 | 1.5.4.3 | Synthetic Timber (GF-01) |  | 20d | 2019-02-22 | 2019-03-18 | 18, 10, 19 | 75d | 10d |
| 21 | 1.5.4.4 | Hand Railing |  | 15d | 2019-03-29 | 2019-04-15 | 20, 16 | 65d | 22d |
| 22 | 1.5.5 | **Planter Island** |  | 35d | 2019-02-11 | 2019-03-23 |  | 85d |  |
| 23 | 1.5.5.1 | Plastering |  | 10d | 2019-02-11 | 2019-02-22 | 18 | 85d | 0d |
| 24 | 1.5.5.2 | Pebble Stone Cladding (GW-07) |  | 15d | 2019-02-22 | 2019-03-12 | 23, 14 | 85d | 0d |
| 25 | 1.5.5.3 | Coping (GC-06) |  | 10d | 2019-03-12 | 2019-03-23 | 11, 24 | 85d | 42d |

| ID | WBS | Task | Type | Duration | Start | Finish | Predecessors | Total slack | Free slack |
| --- | --- | --- | --- | --- | --- | --- | --- | --- | --- |
| 26 | 1.5.6 | **Seasonal Terrace** |  | 45d | 2019-01-31 | 2019-03-23 |  | 55d |  |
| 27 | 1.5.6.1 | Landscape Furniture |  | 30d | 2019-01-31 | 2019-03-06 | 18SS | 55d | 0d |
| 28 | 1.5.6.2 | Stamped Concrete (GF-02/GF-04) |  | 15d | 2019-03-06 | 2019-03-23 | 27 | 55d | 0d |
| 29 | 1.5.7 | **Driveway** |  | 45d | 2019-02-22 | 2019-04-15 |  | 55d |  |
| 30 | 1.5.7.1 | Stamped Concrete (GF-02/GF-04) |  | 45d | 2019-02-22 | 2019-04-15 | 19, 28FF | 55d | 0d |
| 31 | 1.5.8 | Relocation of Sculpture from Skyworld Sales Gallery |  | 10d | 2019-04-15 | 2019-04-26 | 30 | 55d | 12d |
| 32 | 1.5.9 | Entrance Signage |  | 30d | 2019-03-23 | 2019-04-26 | 28 | 55d | 12d |
| 33 | 1.5.10 | **Softscape Works** |  | 87d | 2019-01-31 | 2019-05-10 |  | 43d |  |
| 34 | 1.5.10.1 | **Soil Backfilling and Drainage Cells** |  | 37d | 2019-01-31 | 2019-03-14 |  | 43d |  |
| 35 | 1.5.10.1.1 | Internal Planting |  | 17d | 2019-01-31 | 2019-02-19 | 10 | 43d | 0d |
| 36 | 1.5.10.1.2 | Perimeter Planting |  | 20d | 2019-02-19 | 2019-03-14 | 35 | 43d | 0d |
| 37 | 1.5.10.2 | **Tree Planting** |  | 40d | 2019-02-19 | 2019-04-05 |  | 43d |  |
| 38 | 1.5.10.2.1 | Internal Planting |  | 15d | 2019-02-19 | 2019-03-08 | 35 | 68d | 0d |
| 39 | 1.5.10.2.2 | Perimeter Planting |  | 20d | 2019-03-14 | 2019-04-05 | 36 | 43d | 0d |
| 40 | 1.5.10.3 | **Shrub Planting** |  | 55d | 2019-03-08 | 2019-05-10 |  | 43d |  |
| 41 | 1.5.10.3.1 | Internal Planting |  | 20d | 2019-03-08 | 2019-03-30 | 38 | 68d | 25d |
| 42 | 1.5.10.3.2 | Perimeter Planting |  | 20d | 2019-04-06 | 2019-04-29 | 39, 41FF | 43d | 0d |
| 43 | 1.5.10.3.3 | Turfing |  | 10d | 2019-04-29 | 2019-05-10 | 32FF, 31FF, 42 | 43d | 0d |
| 44 | 1.5.11 | Milestone End - Ground Floor | milestone | 0d | 2019-05-10 | 2019-05-10 | 21, 25, 43 | 43d |  |
| 45 | 1.6 | **E Deck** |  | 110d | 2019-01-08 | 2019-05-14 |  | 5d |  |
| 46 | 1.6.1 | Milestone Start | milestone | 0d | 2019-01-08 | 2019-01-08 | 3FS+40d | 5d | 0d |
| 47 | 1.6.2 | **Terrace and Function Terrace** |  | 75d | 2019-01-08 | 2019-04-03 |  | 5d |  |
| 48 | 1.6.2.1 | Screeding |  | 20d | 2019-01-08 | 2019-01-31 | 46 | 5d | 0d |
| 49 | 1.6.2.2 | Slate Tiles (PF-04 and PF-05) |  | 20d | 2019-03-12 | 2019-04-03 | 57FS+15d, 48 | 40d | 0d |

| ID | WBS | Task | Type | Duration | Start | Finish | Predecessors | Total slack | Free slack |
| --- | --- | --- | --- | --- | --- | --- | --- | --- | --- |
| 50 | 1.6.3 | **Reflexo Garden** |  | 40d | 2019-03-18 | 2019-05-02 |  | 45d |  |
| 51 | 1.6.3.1 | Kerb Edging (PF-06) |  | 15d | 2019-03-18 | 2019-04-03 | 49FF | 45d | 0d |
| 52 | 1.6.3.2 | Reflexo Stones |  | 10d | 2019-04-04 | 2019-04-15 | 51 | 50d | 0d |
| 53 | 1.6.3.3 | Hand Railing |  | 15d | 2019-04-15 | 2019-05-02 | 52 | 50d | 10d |
| 54 | 1.6.4 | **Lynas Play Garden** |  | 20d | 2019-04-04 | 2019-04-26 |  | 55d |  |
| 55 | 1.6.4.1 | Kerb Edging (PF-06) |  | 20d | 2019-04-04 | 2019-04-26 | 51 | 55d |  |
| 56 | 1.6.5 | **Hanging Garden, Hammock Nook, Swing Corner, Tea Garden and Day Bed** |  | 70d | 2019-01-31 | 2019-04-20 |  | 5d |  |
| 57 | 1.6.5.1 | Screeding |  | 20d | 2019-01-31 | 2019-02-22 | 48 | 5d | 0d |
| 58 | 1.6.5.2 | Broken Slates (PF-07) |  | 15d | 2019-04-04 | 2019-04-20 | 57, 49 | 40d | 0d |
| 59 | 1.6.6 | **Garden Gym** |  | 35d | 2019-04-04 | 2019-05-14 |  | 40d |  |
| 60 | 1.6.6.1 | Kerb Edging (PF-06) |  | 10d | 2019-04-04 | 2019-04-15 | 51 | 45d | 5d |
| 61 | 1.6.6.2 | Walkway (PF-03) |  | 20d | 2019-04-20 | 2019-05-14 | 58, 60 | 40d | 0d |
| 62 | 1.6.7 | **Infinity Pool, Wet Deck, Jacuzzi & Overflow Channel, Wading Pool and Wet Deck Island Planter** |  | 70d | 2019-02-22 | 2019-05-14 |  | 40d |  |
| 63 | 1.6.7.1 | Plastering |  | 30d | 2019-02-22 | 2019-03-29 | 48FS+20d | 40d | 0d |
| 64 | 1.6.7.2 | Natural Quartz Stone (PF-01) |  | 30d | 2019-03-29 | 2019-05-02 | 63 | 40d | 0d |
| 65 | 1.6.7.3 | Overflow Wall Coping (PC-11) |  | 10d | 2019-05-02 | 2019-05-14 | 64 | 40d | 0d |
| 66 | 1.6.7.4 | Wet Deck Planter Lid |  | 15d | 2019-04-26 | 2019-05-14 | 65FF | 40d | 0d |
| 67 | 1.6.8 | **Synthetic Timber (PF-02)** |  | 55d | 2019-03-12 | 2019-05-14 |  | 40d |  |
| 68 | 1.6.8.1 | Pool Deck |  | 35d | 2019-03-12 | 2019-04-20 | 49SS | 40d | 0d |
| 69 | 1.6.8.2 | Medi Deck |  | 11d | 2019-04-20 | 2019-05-03 | 68 | 40d | 0d |
| 70 | 1.6.8.3 | Lazy Deck |  | 9d | 2019-05-03 | 2019-05-14 | 69, 66FF | 40d | 0d |
| 71 | 1.6.9 | Pool Shower |  | 20d | 2019-04-20 | 2019-05-14 | 68 | 40d | 0d |
| 72 | 1.6.10 | **Landscape Furniture** |  | 65d | 2019-01-31 | 2019-04-15 |  | 5d |  |
| 73 | 1.6.10.1 | Fabrication of Steel Framing |  | 30d | 2019-01-31 | 2019-03-06 | 57SS | 5d | 0d |
| 74 | 1.6.10.2 | Casting of RC Structure |  | 20d | 2019-03-06 | 2019-03-29 | 73 | 40d | 0d |
| 75 | 1.6.10.3 | Plastering and Finishing |  | 15d | 2019-03-29 | 2019-04-15 | 74 | 40d | 0d |
| 76 | 1.6.11 | Garden Pantry |  | 20d | 2019-04-15 | 2019-05-08 | 75 | 45d | 5d |
| 77 | 1.6.12 | Rock Garden Flooring |  | 5d | 2019-05-08 | 2019-05-14 | 71FF, 70FF, 80FF | 40d | 0d |
| 78 | 1.6.13 | Soil Backfilling and Drainage Cells |  | 50d | 2019-01-08 | 2019-03-06 | 46 | 40d | 0d |
| 79 | 1.6.14 | Tree Planting |  | 30d | 2019-03-06 | 2019-04-09 | 78, 5 | 40d | 0d |
| 80 | 1.6.15 | Shrub Planting |  | 30d | 2019-04-09 | 2019-05-14 | 79, 76FF | 40d | 0d |
| 81 | 1.6.16 | Milestone End - E Deck | milestone | 0d | 2019-05-14 | 2019-05-14 | 53, 77, 76, 61, 80 | 40d |  |

| ID | WBS | Task | Type | Duration | Start | Finish | Predecessors | Total slack | Free slack |
| --- | --- | --- | --- | --- | --- | --- | --- | --- | --- |
| 82 | 1.7 | **Sky Park** |  | 120d | 2019-02-11 | 2019-06-28 |  | 0d |  |
| 83 | 1.7.1 | Milestone Start | milestone | 0d | 2019-02-22 | 2019-02-22 | 3FS+80d | 0d |  |
| 84 | 1.7.2 | **Playmounds (01-06)** |  | 88d | 2019-02-22 | 2019-06-03 |  | 0d |  |
| 85 | 1.7.2.1 | Structure |  | 43d | 2019-02-22 | 2019-04-12 | 83 | 0d |  |
| 86 | 1.7.2.2 | Shaping and Plastering |  | 20d | 2019-04-06 | 2019-04-30 | 85FF+15d | 0d |  |
| 87 | 1.7.2.3 | Play Elements |  | 25d | 2019-04-30 | 2019-05-28 | 86 | 0d |  |
| 88 | 1.7.2.4 | EPDM |  | 10d | 2019-05-23 | 2019-06-03 | 87FF+5d | 0d |  |
| 89 | 1.7.3 | **Sky Park A** |  | 60d | 2019-04-12 | 2019-06-20 |  | 0d |  |
| 90 | 1.7.3.1 | Screeding |  | 20d | 2019-04-12 | 2019-05-06 | 85 | 32d | 0d |
| 91 | 1.7.3.2 | EPDM (SF-07b) |  | 15d | 2019-06-03 | 2019-06-20 | 88 | 0d |  |
| 92 | 1.7.4 | **Jogging Path** |  | 40d | 2019-05-06 | 2019-06-20 |  | 7d |  |
| 93 | 1.7.4.1 | Screeding |  | 15d | 2019-05-06 | 2019-05-23 | 90 | 32d |  |
| 94 | 1.7.4.2 | EPDM (SF-07b) |  | 15d | 2019-06-03 | 2019-06-20 | 88, 91SS, 96FF | 0d |  |
| 95 | 1.7.5 | **Dining and Party Pavillion** |  | 115d | 2019-02-11 | 2019-06-22 |  | 5d |  |
| 96 | 1.7.5.1 | Slate Tiles (PF-04 and PF-05) |  | 30d | 2019-04-06 | 2019-05-11 | 86SS | 17d | 0d |
| 97 | 1.7.5.2 | Structure and Finishes for Hand Wash Basin and Installation of Sanitary Ware |  | 15d | 2019-06-05 | 2019-06-22 | 96, 107 | 5d |  |
| 98 | 1.7.5.3 | **Jacuzzi** |  | 103d | 2019-02-22 | 2019-06-20 |  | 5d |  |
| 99 | 1.7.5.3.1 | Profiling Works |  | 15d | 2019-04-30 | 2019-05-17 | 86 | 5d | 0d |
| 100 | 1.7.5.3.2 | Planter Wall, Steps and Seat using Pebblewash (SP-05) |  | 15d | 2019-05-17 | 2019-06-03 | 99 | 5d | 0d |
| 101 | 1.7.5.3.3 | Soil Backfilling and Drainage Cells |  | 10d | 2019-02-22 | 2019-03-06 | 83 | 83d | 78d |
| 102 | 1.7.5.3.4 | Planting Works |  | 10d | 2019-06-03 | 2019-06-14 | 101, 100 | 5d | 0d |
| 103 | 1.7.5.3.5 | Synthetic Timber (SF-06) |  | 10d | 2019-06-03 | 2019-06-14 | 102SS | 5d | 0d |
| 104 | 1.7.5.3.6 | Pathway using Loose Pebble Stones (SF-03) |  | 5d | 2019-06-14 | 2019-06-20 | 103 | 5d |  |
| 105 | 1.7.5.4 | **Furniture at Party Pavillion and Dining Pavillion** |  | 110d | 2019-02-11 | 2019-06-17 |  | 5d |  |
| 106 | 1.7.5.4.1 | Fabrication of Steel Framing |  | 60d | 2019-02-11 | 2019-04-20 | 73SS+2w, 85SS | 5d | 0d |
| 107 | 1.7.5.4.2 | RC Structure |  | 40d | 2019-04-20 | 2019-06-05 | 72FF+10d, 106, 96SS | 5d | 0d |
| 108 | 1.7.5.4.3 | Plastering and Finishing |  | 25d | 2019-05-20 | 2019-06-17 | 107SS+25d | 10d |  |

| ID | WBS | Task | Type | Duration | Start | Finish | Predecessors | Total slack | Free slack |
| --- | --- | --- | --- | --- | --- | --- | --- | --- | --- |
| 109 | 1.7.6 | **Giant Chess Corner** |  | 42d | 2019-05-11 | 2019-06-28 |  | 0d |  |
| 110 | 1.7.6.1 | Screeding |  | 5d | 2019-05-11 | 2019-05-17 | 96 | 30d |  |
| 111 | 1.7.6.2 | EPDM (SF-07b) |  | 5d | 2019-06-20 | 2019-06-26 | 110, 94 | 0d |  |
| 112 | 1.7.6.3 | Giant Chess Set |  | 2d | 2019-06-26 | 2019-06-28 | 111, 104 | 0d |  |
| 113 | 1.7.7 | **Sky Park B** |  | 15d | 2019-06-03 | 2019-06-20 |  | 7d |  |
| 114 | 1.7.7.1 | Artificial Turf |  | 10d | 2019-06-03 | 2019-06-14 | 103SS | 7d | 0d |
| 115 | 1.7.7.2 | Edge Restraint |  | 5d | 2019-06-14 | 2019-06-20 | 114 | 7d |  |
| 116 | 1.7.8 | Milestone End - Sky Park | milestone | 0d | 2019-06-28 | 2019-06-28 | 115, 112, 97 | 0d |  |
| 117 | 1.8 | Milestone End | milestone | 0d | 2019-06-28 | 2019-06-28 | 44, 81, 116, 108, 91 | 0d |  |
| 118 | 1.9 | Authority Inspection | milestone | 0d | 2019-06-28 | 2019-06-28 | 117 | 0d |  |
